# GPS-XAR

Schedule from MS Project, 2007-04-02 to 2007-10-17, A marks actual dates.
Project Schedule
NCICB

## Calendars

- Standard: Mon-Fri 08:00-12:00, 13:00-17:00; Sat-Sun off.

## Resources

| Resource |
| --- |
| smatyas |
| bgendleman |
| smiller |
| kkanchinadam |

## Schedule

| ID | WBS | Task | Duration | Start | Finish | Predecessors | Complete | Remaining | Baseline start | Baseline finish | Baseline duration | Total slack | Free slack | Constraint | Deadline | Resources | Work | Actual work |
| --- | --- | --- | --- | --- | --- | --- | --- | --- | --- | --- | --- | --- | --- | --- | --- | --- | --- | --- |
| 1 | 1 | **GPS-XAR 1.0** | 143d? | 2007-04-02 A | 2007-10-17 |  | 18% | 117.12d? | 2007-04-02 | 2007-05-21 | 35.75d? | 0d |  |  |  |  | 241.4h | 139.2h |
| 2 | 1.1 | **Inception Phase** | 40d? | 2007-04-02 A | 2007-05-28 |  | 53% | 18.71d? | 2007-04-02 | 2007-05-15 | 32d | 0d |  |  |  |  | 221.4h | 139.2h |
| 3 | 1.1.1 | **Inception Iteration 1** | 40d? | 2007-04-02 A | 2007-05-28 |  | 53% | 18.71d? | 2007-04-02 | 2007-05-15 | 32d | 0d |  |  |  |  | 221.4h | 139.2h |
| 4 | 1 | **Project Management** | 28d? | 2007-04-06 A | 2007-05-15 |  | 53% | 13.2d? | 2007-04-02 | 2007-05-15 | 31.25d | 0d |  |  |  |  | 16h | 16h |
| 5 | 1.1.1.1.1 | Plan the project | 1d? | 2007-04-06 A | 2007-04-06 A |  | 100% |  | 2007-04-02 | 2007-04-19 | 12d |  |  | start no earlier than 2007-04-02 |  | bgendleman [20%]; kkanchinadam | 16h | 16h |
| 6 | 1.4 | Plan Remainder of Initial Iteration | 1d? | 2007-04-19 A | 2007-04-19 A |  | 100% |  | 2007-04-19 | 2007-04-19 | 1d |  |  | start no earlier than 2007-04-19 |  |  |  |  |
| 7 | 1.8 | Plan for Next Iteration | 1d? | 2007-05-11 | 2007-05-11 | 12FF |  |  | 2007-05-07 | 2007-05-11 | 5d | 2d |  |  |  |  |  |  |
| 8 | 1.1.1.1.4 | **Finalize Deliverables** | 3d? | 2007-05-11 A | 2007-05-15 |  | 43% | 1.73d? | 2007-04-02 | 2007-05-15 | 31.25d | 0d |  |  |  |  |  |  |
| 9 | 1.1.1.1.4.1 | April Status Report | 1d? | 2007-05-15 A | 2007-05-15 A |  | 100% |  | 2007-05-15 | 2007-05-15 | 2h |  |  | start no earlier than 2007-05-15 | 2007-05-15 |  |  |  |
| 10 | 1.1.1.1.4.2 | May Status Report | 1d? | 2007-05-11 | 2007-05-11 |  |  |  |  |  |  | 2d |  | start no earlier than 2007-05-11 |  |  |  |  |
| 11 | 1.1.1.1.4.3 | Release Risk List | 1d? | 2007-05-11 A | 2007-05-11 |  | 50% | 0.5d? | 2007-04-02 | 2007-04-02 | 2h | 2d |  | start no earlier than 2007-05-11 | 2007-05-15 |  |  |  |
| 12 | 1.9 | Release Software Development Plan | 1d? | 2007-05-11 A | 2007-05-11 |  | 20% | 0.8d? | 2007-05-11 | 2007-05-11 | 1d | 2d | 0d | start no earlier than 2007-05-11 |  |  |  |  |
| 13 | 3 | **Requirements** | 39.9d? | 2007-04-02 A | 2007-05-25 |  | 95% | 1.82d? | 2007-04-02 | 2007-05-14 | 30.35d | -0.9d | 0d |  |  |  | 105.6h | 97.6h |
| 14 | 3.2 | Elicit Stakeholder Needs | 5.38d | 2007-04-06 A | 2007-04-13 A | 5SS | 100% |  | 2007-04-04 | 2007-05-04 | 22.75d |  |  |  |  |  |  |  |
| 15 | 3.3 | Identify and Describe Use Cases | 7d | 2007-04-18 A | 2007-05-04 A |  | 100% |  | 2007-04-18 | 2007-04-23 | 4d |  |  | finish no earlier than 2007-04-20 |  | bgendleman | 56h | 56h |
| 16 | 3.5 | Refine the System Definition | 2.5d | 2007-05-04 A | 2007-05-17 A | 6, 15 | 100% |  | 2007-04-24 | 2007-05-10 | 6.25d |  |  | start no earlier than 2007-04-18 |  | bgendleman | 20h | 20h |
| 17 | 1.1.1.2.4 | **Implement Requirement and Test Traceability** | 4.5d | 2007-04-16 A | 2007-04-20 A |  | 100% |  | 2007-04-16 | 2007-04-20 | 4.6d |  |  |  |  |  | 3.6h | 3.6h |
| 18 | 1.1.1.2.4.1 | Determine Approach | 2.25d | 2007-04-16 A | 2007-04-20 A |  | 100% |  | 2007-04-16 | 2007-04-20 | 2.25d |  |  | start no earlier than 2007-04-16 |  | bgendleman [20%] | 3.6h | 3.6h |
| 19 | 1.1.1.2.5 | **Finalize Deliverables** | 39.9d? | 2007-04-02 A | 2007-05-25 |  | 79% | 8.4d? | 2007-04-02 | 2007-05-14 | 30.35d | -0.9d | 0d |  |  |  | 26h | 18h |
| 20 | 1.1.1.2.5.1 | Finalize ARC Document | 1d? | 2007-04-27 A | 2007-04-27 A |  | 100% |  |  |  |  |  |  | start no earlier than 2007-04-27 |  |  |  |  |
| 21 | 1.1.1.2.5.2 | Requirements Management Plan | 0.25d | 2007-05-11 A | 2007-05-11 A |  | 100% |  | 2007-04-02 | 2007-04-09 | 0.25d |  |  |  |  | bgendleman | 2h | 2h |
| 22 | 1.1.1.2.5.3 | Finalize Vision Document | 1d | 2007-05-14 A | 2007-05-24 |  | 90% | 0.1d | 2007-04-30 | 2007-05-11 | 1d | -7d | 0d |  |  | bgendleman | 8h | 7.2h |
| 23 | 1.1.1.2.5.4 | Finalize Supplementary Spec | 1d | 2007-05-11 A | 2007-05-25 | 22 | 10% | 0.9d | 2007-05-11 | 2007-05-14 | 1d | -7.9d | 0d |  |  | bgendleman | 8h | 0.8h |
| 24 | 1.1.1.2.5.5 | Produce Use Case Summary | 0.5d | 2007-04-02 A | 2007-04-02 A |  | 100% |  |  |  |  |  |  |  |  |  |  |  |
| 25 | 1.1.1.2.5.6 | Finalize Use Case Model | 1d | 2007-04-27 A | 2007-05-11 A | 15 | 100% |  | 2007-04-27 | 2007-05-04 | 1d |  |  |  | 2007-05-04 | bgendleman | 8h | 8h |

| ID | WBS | Task | Type | Duration | Start | Finish | Predecessors | Complete | Remaining | Baseline start | Baseline finish | Baseline duration | Total slack | Free slack | Constraint | Deadline | Resources | Work | Actual work |
| --- | --- | --- | --- | --- | --- | --- | --- | --- | --- | --- | --- | --- | --- | --- | --- | --- | --- | --- | --- |
| 26 | 4 | **Analysis and Design** |  | 37d? | 2007-04-02 A | 2007-05-22 |  | 14% | 31.86d? | 2007-04-02 | 2007-04-20 | 15d | 3d |  |  |  |  |  |  |
| 27 | 1.1.1.3.1 | Analyze PRIDE XML |  | 9d | 2007-05-09 A | 2007-05-21 |  | 11% | 8d |  |  |  | 3d | 0d |  |  |  |  |  |
| 28 | 1.1.1.3.2 | Analyze CPAS 2.0 Data Model |  | 2d | 2007-04-02 A | 2007-04-03 |  | 25% | 1.5d |  |  |  | 38d |  |  |  |  |  |  |
| 29 | 1.1.1.3.3 | Compare PRIDE and XAR |  | 1d? | 2007-05-22 | 2007-05-22 | 27 |  |  |  |  |  | 3d |  |  |  |  |  |  |
| 30 | 4.1 | Use Case Analysis |  | 1d | 2007-04-05 A | 2007-04-05 A |  | 100% |  | 2007-04-05 | 2007-04-05 | 1d |  |  | start no earlier than 2007-04-05 |  |  |  |  |
| 31 | 1.1.1.3.5 | **Finalize Deliverables** |  | 5d | 2007-04-02 | 2007-04-06 |  |  |  | 2007-04-11 | 2007-04-19 | 6d | 35d |  |  |  |  |  |  |
| 32 | 1.1.1.3.5.1 | Release Candidate Software Architecture Document |  | 5d | 2007-04-02 | 2007-04-06 |  |  |  | 2007-04-11 | 2007-04-19 | 5d | 35d |  |  |  |  |  |  |
| 33 | 1.1.1.4 | **Implementation** |  | 2d | 2007-04-02 A | 2007-04-03 A |  | 100% |  | 2007-04-02 | 2007-05-15 | 32d |  |  |  |  |  |  |  |
| 34 | 1.1.1.4.1 | Install CPAS Locally/Reverse Engineer Data Model |  | 2d | 2007-04-02 A | 2007-04-03 A |  | 100% |  |  |  |  |  |  |  |  |  |  |  |
| 35 | 1.1.1.4.2 | Structure the Implementation Model |  | 2d | 2007-04-02 A | 2007-04-03 A |  | 100% |  | 2007-04-02 | 2007-04-04 | 1.5d |  |  | start no earlier than 2007-04-09 | 2007-04-06 |  |  |  |
| 36 | 5 | **Test** |  | 23.52d | 2007-04-02 A | 2007-05-03 |  | 7% | 21.96d | 2007-04-02 | 2007-05-15 | 31.07d | 8.48d |  |  |  |  | 27.8h | 1.6h |
| 37 | 1.1.1.5.1 | Meet with Indepdent QA |  | 2h | 2007-04-02 A | 2007-04-02 A |  | 100% |  | 2007-04-09 | 2007-04-09 | 2h |  |  | finish no later than 2007-04-27 | 2007-04-27 | bgendleman [80%] | 1.6h | 1.6h |
| 38 | 5.1 | Analyze and Identify Test Approach |  | 1d | 2007-04-02 | 2007-04-27 |  |  |  | 2007-04-02 | 2007-04-27 | 1d | 8.48d | 0d |  |  | smatyas; bgendleman | 8h |  |
| 39 | 1.1.1.5.3 | **Finalize Deliverables** |  | 4.02d | 2007-04-27 | 2007-05-03 |  |  |  | 2007-04-27 | 2007-05-04 | 5d | 8.48d |  |  |  |  | 18.2h |  |
| 40 | 1.1.1.5.3.1 | Release Test Plan |  | 2.53d | 2007-04-27 | 2007-05-03 | 38 |  |  | 2007-04-27 | 2007-05-04 | 2.5d | 8.48d |  |  |  | smatyas; bgendleman [25%] | 18.2h |  |
| 41 | 6 | **Environment** |  | 30d | 2007-04-09 A | 2007-05-18 |  | 51% | 14.69d | 2007-04-02 | 2007-05-14 | 30.25d | 0d |  |  |  |  | 42h | 24h |
| 42 | 1.1.1.6.1 | Launch Development Process |  | 3h | 2007-04-09 A | 2007-04-09 A |  | 100% |  | 2007-04-09 | 2007-04-18 | 6h |  |  | start no earlier than 2007-04-09 |  | smatyas; smiller | 6h | 6h |
| 43 | 1.1.1.6.2 | **Finalize Deliverables** |  | 25d | 2007-04-16 A | 2007-05-18 |  | 49% | 12.68d | 2007-04-19 | 2007-05-14 | 17.25d | 0d |  |  |  |  | 36h | 18h |
| 44 | 1.1.1.6.2.1 | Release Development Case |  | 0.25d | 2007-05-14 A | 2007-05-14 |  | 20% | 0.2d | 2007-05-14 | 2007-05-14 | 0.25d | 1.75d |  | start no earlier than 2007-05-14 |  |  |  |  |
| 45 | 1.1.1.6.2.2 | Release Guidelines for the Project |  | 1.25d | 2007-04-16 A | 2007-04-17 |  | 50% | 0.62d | 2007-04-20 | 2007-04-23 | 1.25d | 20.75d |  | start no earlier than 2007-04-16 |  |  |  |  |
| 46 | 1.1.1.6.2.3 | Release Templates for the Project |  | 9d | 2007-04-17 A | 2007-05-18 |  | 50% | 4.5d | 2007-04-19 | 2007-04-30 | 5.55d | -3d | 0d | finish no earlier than 2007-04-13 |  | smiller [50%] | 36h | 18h |
| 47 | 7 | **Configuration & Change Management** |  | 32.11d | 2007-04-02 | 2007-05-16 |  |  |  | 2007-04-02 | 2007-05-15 | 31.25d | -0.86d | 0d |  |  |  | 30h |  |
| 48 | 7.1 | Plan Project Configuration and Change Control |  | 1d | 2007-04-20 | 2007-04-23 |  |  |  | 2007-04-20 | 2007-04-24 | 0.55d | 16.75d |  | finish no earlier than 2007-04-20 | 2007-05-15 | bgendleman | 8h |  |
| 49 | 1.1.1.7.2 | **Finalize Deliverables** |  | 32.11d | 2007-04-02 | 2007-05-16 |  |  |  | 2007-04-02 | 2007-05-15 | 31.25d | -0.86d | 0d |  |  |  | 22h |  |
| 50 | 1.1.1.7.2.1 | Release Configuration Management Plan |  | 0.75d | 2007-04-02 | 2007-05-16 |  |  |  | 2007-04-02 | 2007-05-15 | 0.75d | -0.5d | 0d |  |  | bgendleman | 6h |  |
| 51 | 1.1.1.7.2.2 | G-Forge Implementation of the Change Control Process |  | 2d | 2007-04-02 | 2007-05-16 |  |  |  | 2007-04-02 | 2007-05-14 | 2d | -0.86d | 0d |  |  | bgendleman | 16h |  |
| 52 | 1.1.1.8 | Inception Complete | milestone | 0d | 2007-05-28 | 2007-05-28 | 4, 5, 19, 8, 39, 43, 49 |  |  | 2007-05-15 | 2007-05-15 | 0d | -8d | 0d | start no earlier than 2007-05-28 | 2007-05-15 |  |  |  |

Notes:
- 28: - installed cpas local / - reverse engineered the data model
- 45: UML, Java, JSP/HTML
- 46: Java, JSP/HTML / Use Case Summary / Use Case Specification / Vision / Traceability Matrix - will attempt to do in EA

| ID | WBS | Task | Duration | Start | Finish | Predecessors | Baseline start | Baseline finish | Baseline duration | Total slack | Constraint | Resources | Work |
| --- | --- | --- | --- | --- | --- | --- | --- | --- | --- | --- | --- | --- | --- |
| 53 | 1.2 | **Elaboration Phase** | 23d | 2007-05-28 | 2007-06-27 | 3 | 2007-05-15 | 2007-05-17 | 2.5d? | 0d |  |  | 20h |
| 54 | 1.2.1 | **Elaboration - Iteration 1** | 23d | 2007-05-28 | 2007-06-27 |  | 2007-05-15 | 2007-05-17 | 2.5d | 0d |  |  | 20h |
| 55 | 1.2.1.1 | **Project Management** | 9d | 2007-05-28 | 2007-06-07 | 52 |  |  |  | 14d |  |  | 20h |
| 56 | 1.2.1.1.1 | Iteration Post Mortem - Inception | 20h | 2007-05-28 | 2007-05-30 |  | 2007-05-15 | 2007-05-17 | 20h | 20.5d | start no earlier than 2007-05-23 | smatyas | 20h |
| 57 | 1.2.1.1.2 | Plan Iteration | 1d | 2007-05-28 | 2007-05-28 |  |  |  |  | 22d |  |  |  |
| 58 | 1.2.1.1.3 | Trip to Indianapolis - CPAS | 4d | 2007-06-04 | 2007-06-07 |  |  |  |  | 14d | start no earlier than 2007-06-04 |  |  |
| 59 | 1.2.1.1.4 | Plan for Next Iteration | 1d | 2007-05-28 | 2007-05-28 |  |  |  |  | 22d |  |  |  |
| 60 | 1.2.1.1.5 | **Finalize Deliverables** | 1d | 2007-05-28 | 2007-05-28 |  |  |  |  | 22d |  |  |  |
| 61 | 1.2.1.1.5.1 | Update Project Plan | 1d | 2007-05-28 | 2007-05-28 |  |  |  |  | 22d |  |  |  |
| 62 | 1.2.1.1.5.2 | Update Risk List | 1d | 2007-05-28 | 2007-05-28 |  |  |  |  | 22d |  |  |  |
| 63 | 1.2.1.2 | **Requirements** | 2d | 2007-05-28 | 2007-05-29 |  |  |  |  | 21d |  |  |  |
| 64 | 1.2.1.2.1 | Incorporate Stakeholder Comments into Vision and Supplemental Specs | 2d | 2007-05-28 | 2007-05-29 |  |  |  |  | 21d |  |  |  |
| 65 | 1.2.1.2.2 | **Finalize Deliverables** | 1d | 2007-05-28 | 2007-05-28 |  |  |  |  | 22d |  |  |  |
| 66 | 1.2.1.2.2.1 | Detail Registration and Login UC | 1d | 2007-05-28 | 2007-05-28 |  |  |  |  | 22d |  |  |  |
| 67 | 1.2.1.2.2.2 | Detail Create Annotated Proteomic Experiment File UC | 1d | 2007-05-28 | 2007-05-28 |  |  |  |  | 22d |  |  |  |
| 68 | 1.2.1.2.2.3 | Parse and Validate Proteomic Experiment File UC | 1d | 2007-05-28 | 2007-05-28 |  |  |  |  | 22d |  |  |  |
| 69 | 1.2.1.3 | **Analysis and Design** | 18d | 2007-05-28 | 2007-06-20 |  |  |  |  | 0d |  |  |  |
| 70 | 1.2.1.3.1 | Object Model for Experiment Annotation | 8d | 2007-05-28 | 2007-06-06 |  |  |  |  | 0d |  |  |  |
| 71 | 1.2.1.3.2 | Design of Conversion to XAR or PRIDE | 10d | 2007-06-07 | 2007-06-20 | 70 |  |  |  | 0d |  |  |  |
| 72 | 1.2.1.4 | **Implementation** | 23d | 2007-05-28 | 2007-06-27 |  |  |  |  | 0d |  |  |  |
| 73 | 1.2.1.4.1 | UI for Experiment Annotation | 5d | 2007-06-21 | 2007-06-27 | 71 |  |  |  | 0d |  |  |  |
| 74 | 1.2.1.4.2 | Representative XML Produced | 1d | 2007-05-28 | 2007-05-28 |  |  |  |  | 22d |  |  |  |
| 75 | 1.2.1.5 | **Test** | 1d | 2007-05-28 | 2007-05-28 |  |  |  |  | 22d |  |  |  |
| 76 | 1.2.1.5.1 | Produce Test Plan | 1d | 2007-05-28 | 2007-05-28 |  |  |  |  | 22d |  |  |  |
| 77 | 1.2.1.5.2 | Junit Tests for Targeted UC | 1d | 2007-05-28 | 2007-05-28 |  |  |  |  | 22d |  |  |  |

| ID | WBS | Task | Type | Duration | Start | Finish | Predecessors | Baseline start | Baseline finish | Baseline duration | Total slack | Free slack |
| --- | --- | --- | --- | --- | --- | --- | --- | --- | --- | --- | --- | --- |
| 78 | 1.2.1.6 | **Environment** |  | 6d | 2007-05-28 | 2007-06-04 |  |  |  |  | 17d |  |
| 79 | 1.2.1.6.1 | Development Environment Available |  | 1w | 2007-05-28 | 2007-06-01 |  |  |  |  | 17d | 0d |
| 80 | 1.2.1.6.2 | **Set Up Tools** |  | 1d | 2007-06-04 | 2007-06-04 | 79 |  |  |  | 17d |  |
| 81 | 1.2.1.6.2.1 | Set Up Maven |  | 1d | 2007-06-04 | 2007-06-04 |  |  |  |  | 17d |  |
| 82 | 1.2.1.6.2.2 | Set Up Continuous Integration |  | 1d | 2007-06-04 | 2007-06-04 |  |  |  |  | 17d |  |
| 83 | 1.2.1.6.2.3 | Set Up Eclipse |  | 1d | 2007-06-04 | 2007-06-04 |  |  |  |  | 17d |  |
| 84 | 1.2.1.6.2.4 | Set Up Selenium |  | 1d | 2007-06-04 | 2007-06-04 |  |  |  |  | 17d |  |
| 85 | 1.2.1.6.2.5 | Set Up Code Quality Tools |  | 1d | 2007-06-04 | 2007-06-04 |  |  |  |  | 17d |  |
| 86 | 1.2.1.7 | Configuration Management |  | 1d | 2007-05-28 | 2007-05-28 |  |  |  |  | 22d |  |
| 87 | 1.2.1.8 | Elabortion Iteration 1 Complete |  | 1d | 2007-05-28 | 2007-05-28 |  |  |  |  | 22d |  |
| 88 | 1.3 | **Construction Phase** |  | 60d | 2007-06-28 | 2007-09-19 | 53 | 2007-05-17 | 2007-05-18 | 1d? | 0d |  |
| 89 | 1.3.1 | Construction - Iteration 1 |  | 4w | 2007-06-28 | 2007-07-25 |  | 2007-05-17 | 2007-05-18 | 1d? | 0d |  |
| 90 | 1.3.2 | Construction - Iteration 2 | milestone | 4w | 2007-07-26 | 2007-08-22 | 89 | 2007-05-17 | 2007-05-18 | 1d? | 0d |  |
| 91 | 1.3.3 | Construction - Iteration 3 |  | 4w | 2007-08-23 | 2007-09-19 | 90 |  |  |  | 0d |  |
| 92 | 1.3.4 | Release Candidate Delivered to QA |  | 1d | 2007-06-28 | 2007-06-28 |  |  |  |  | 59d |  |
| 93 | 1.4 | **Transition Phase** |  | 20d | 2007-09-20 | 2007-10-17 | 88, 92 | 2007-05-18 | 2007-05-21 | 1d? | 0d |  |
| 94 | 1.4.1 | Transition - Iteration 1 | milestone | 4w | 2007-09-20 | 2007-10-17 |  | 2007-05-18 | 2007-05-21 | 1d? | 0d |  |
| 95 | 2 | **GPS-XAR 1.x** |  | 1d? | 2007-04-02 | 2007-04-02 |  |  |  |  | 142d |  |
| 96 | 2.1 | Elaboration |  | 1d? | 2007-04-02 | 2007-04-02 |  |  |  |  | 142d |  |
| 97 | 2.2 | Construction |  | 1d? | 2007-04-02 | 2007-04-02 |  |  |  |  | 142d |  |
| 98 | 2.3 | Transition |  | 1d? | 2007-04-02 | 2007-04-02 |  |  |  |  | 142d |  |
