# GPS-XAR

Schedule from MS Project, 2007-04-02 to 2008-08-04, A marks actual dates.
Project Schedule
NCICB

## Calendars

- Standard: Mon-Fri 08:00-12:00, 13:00-17:00; Sat-Sun off.

## Resources

| Resource |
| --- |
| smatyas |
| bgendleman |
| smiller |
| kkanchinadam |

## Schedule

| ID | WBS | Task | Duration | Start | Finish | Predecessors | Complete | Remaining | Baseline start | Baseline finish | Baseline duration | Total slack | Free slack | Constraint | Deadline | Resources | Work | Actual work |
| --- | --- | --- | --- | --- | --- | --- | --- | --- | --- | --- | --- | --- | --- | --- | --- | --- | --- | --- |
| 1 | 1 | **protExpress 1.0** | 340d? | 2007-04-02 A | 2008-07-18 |  | 42% | 196.59d? | 2007-04-02 | 2007-05-21 | 35.75d? | 11d |  |  |  |  | 288.2h | 217.2h |
| 2 | 1.1 | **Inception Phase** | 41d? | 2007-04-02 A | 2007-05-28 |  | 97% | 1.12d? | 2007-04-02 | 2007-05-15 | 32d | 113.58d | 0d |  |  |  | 215.4h | 197.2h |
| 3 | 1.1.1 | **Inception Iteration 1** | 41d? | 2007-04-02 A | 2007-05-28 |  | 97% | 1.12d? | 2007-04-02 | 2007-05-15 | 32d | 113.58d |  |  |  |  | 215.4h | 197.2h |
| 4 | 1 | **Project Management** | 31d? | 2007-04-06 A | 2007-05-18 A |  | 100% |  | 2007-04-02 | 2007-05-15 | 31.25d |  |  |  |  |  | 16h | 16h |
| 5 | 1.1.1.1.1 | Plan the project | 1d? | 2007-04-06 A | 2007-04-06 A |  | 100% |  | 2007-04-02 | 2007-04-19 | 12d |  |  | start no earlier than 2007-04-02 |  | bgendleman [20%]; kkanchinadam | 16h | 16h |
| 6 | 1.4 | Plan Remainder of Initial Iteration | 1d? | 2007-04-19 A | 2007-04-19 A | 5 | 100% |  | 2007-04-19 | 2007-04-19 | 1d |  |  | start no earlier than 2007-04-19 |  |  |  |  |
| 7 | 1.8 | Plan for Next Iteration | 1d | 2007-05-18 A | 2007-05-18 A | 6 | 100% |  | 2007-05-07 | 2007-05-11 | 5d |  |  |  |  |  |  |  |
| 8 | 1.1.1.1.4 | **Finalize Deliverables** | 3d? | 2007-05-11 A | 2007-05-15 A | 7 | 100% |  | 2007-04-02 | 2007-05-15 | 31.25d |  |  |  |  |  |  |  |
| 9 | 1.1.1.1.4.1 | April Status Report | 1d? | 2007-05-15 A | 2007-05-15 A |  | 100% |  | 2007-05-15 | 2007-05-15 | 2h |  |  | start no earlier than 2007-05-15 | 2007-05-15 |  |  |  |
| 10 | 1.1.1.1.4.2 | May Status Report | 1d? | 2007-05-11 A | 2007-05-11 A | 9 | 100% |  |  |  |  |  |  | start no earlier than 2007-05-11 |  |  |  |  |
| 11 | 1.1.1.1.4.3 | Release Risk List | 1d? | 2007-05-11 A | 2007-05-11 A | 10 | 100% |  | 2007-04-02 | 2007-04-02 | 2h |  |  | start no earlier than 2007-05-11 | 2007-05-15 |  |  |  |
| 12 | 3 | **Requirements** | 39.9d? | 2007-04-02 A | 2007-05-25 A | 4 | 100% |  | 2007-04-02 | 2007-05-14 | 30.35d |  |  |  |  |  | 105.6h | 105.6h |
| 13 | 3.2 | Elicit Stakeholder Needs | 5.38d | 2007-04-06 A | 2007-04-13 A |  | 100% |  | 2007-04-04 | 2007-05-04 | 22.75d |  |  |  |  |  |  |  |
| 14 | 3.3 | Identify and Describe Use Cases | 7d | 2007-04-18 A | 2007-05-04 A | 13 | 100% |  | 2007-04-18 | 2007-04-23 | 4d |  |  | finish no earlier than 2007-04-20 |  | bgendleman | 56h | 56h |
| 15 | 3.5 | Refine the System Definition | 2.5d | 2007-05-04 A | 2007-05-17 A | 14 | 100% |  | 2007-04-24 | 2007-05-10 | 6.25d |  |  | start no earlier than 2007-04-18 |  | bgendleman | 20h | 20h |
| 16 | 1.1.1.2.4 | **Implement Requirement and Test Traceability** | 4.5d | 2007-04-16 A | 2007-04-20 A | 15 | 100% |  | 2007-04-16 | 2007-04-20 | 4.6d |  |  |  |  |  | 3.6h | 3.6h |
| 17 | 1.1.1.2.4.1 | Determine Approach | 2.25d | 2007-04-16 A | 2007-04-20 A |  | 100% |  | 2007-04-16 | 2007-04-20 | 2.25d |  |  | start no earlier than 2007-04-16 |  | bgendleman [20%] | 3.6h | 3.6h |
| 18 | 1.1.1.2.5 | **Finalize Deliverables** | 39.9d? | 2007-04-02 A | 2007-05-25 A | 16 | 100% |  | 2007-04-02 | 2007-05-14 | 30.35d |  |  |  |  |  | 26h | 26h |
| 19 | 1.1.1.2.5.1 | Finalize ARC Document | 1d? | 2007-04-27 A | 2007-04-27 A |  | 100% |  |  |  |  |  |  | start no earlier than 2007-04-27 |  |  |  |  |
| 20 | 1.1.1.2.5.2 | Requirements Management Plan | 0.25d | 2007-05-11 A | 2007-05-11 A | 19 | 100% |  | 2007-04-02 | 2007-04-09 | 0.25d |  |  |  |  | bgendleman | 2h | 2h |
| 21 | 1.1.1.2.5.3 | Finalize Vision Document | 1d | 2007-05-14 A | 2007-05-24 A | 20 | 100% |  | 2007-04-30 | 2007-05-11 | 1d |  |  |  |  | bgendleman | 8h | 8h |
| 22 | 1.1.1.2.5.4 | Finalize Supplementary Spec | 1d | 2007-05-11 A | 2007-05-25 A | 21 | 100% |  | 2007-05-11 | 2007-05-14 | 1d |  |  |  |  | bgendleman | 8h | 8h |
| 23 | 1.1.1.2.5.5 | Produce Use Case Summary | 0.5d | 2007-04-02 A | 2007-04-02 A | 22 | 100% |  |  |  |  |  |  |  |  |  |  |  |
| 24 | 1.1.1.2.5.6 | Finalize Use Case Model | 1d | 2007-04-27 A | 2007-05-11 A | 23 | 100% |  | 2007-04-27 | 2007-05-04 | 1d |  |  |  | 2007-05-04 | bgendleman | 8h | 8h |

| ID | WBS | Task | Duration | Start | Finish | Predecessors | Complete | Remaining | Baseline start | Baseline finish | Baseline duration | Total slack | Constraint | Deadline | Resources | Work | Actual work |
| --- | --- | --- | --- | --- | --- | --- | --- | --- | --- | --- | --- | --- | --- | --- | --- | --- | --- |
| 25 | 4 | **Analysis and Design** | 16d | 2007-05-07 A | 2007-05-28 A | 12 | 100% |  | 2007-04-02 | 2007-04-20 | 15d |  |  |  |  |  |  |
| 26 | 1.1.1.3.1 | Analyze PRIDE XML | 9d | 2007-05-09 A | 2007-05-21 A |  | 100% |  |  |  |  |  |  |  |  |  |  |
| 27 | 1.1.1.3.2 | Analyze CPAS 2.0 Data Model | 5d | 2007-05-07 A | 2007-05-11 A | 26 | 100% |  |  |  |  |  |  |  |  |  |  |
| 28 | 1.1.1.3.3 | Compare PRIDE and XAR | 5d | 2007-05-22 A | 2007-05-28 A | 27 | 100% |  |  |  |  |  |  |  |  |  |  |
| 29 | 1.1.1.3.4 | **Finalize Deliverables** | 3d | 2007-05-24 A | 2007-05-28 A | 28 | 100% |  | 2007-04-11 | 2007-04-19 | 6d |  |  |  |  |  |  |
| 30 | 1.1.1.3.4.1 | Release Candidate Software Architecture Document | 3d | 2007-05-24 A | 2007-05-28 A |  | 100% |  | 2007-04-11 | 2007-04-19 | 5d |  |  |  |  |  |  |
| 31 | 1.1.1.4 | **Implementation** | 2d | 2007-04-02 A | 2007-04-03 A | 25 | 100% |  | 2007-04-02 | 2007-05-15 | 32d |  |  |  |  |  |  |
| 32 | 1.1.1.4.1 | Install CPAS Locally/Reverse Engineer Data Model | 2d | 2007-04-02 A | 2007-04-03 A |  | 100% |  |  |  |  |  |  |  |  |  |  |
| 33 | 1.1.1.4.2 | Structure the Implementation Model | 2d | 2007-04-02 A | 2007-04-03 A | 32 | 100% |  | 2007-04-02 | 2007-04-04 | 1.5d |  | start no earlier than 2007-04-09 | 2007-04-06 |  |  |  |
| 34 | 5 | **Test** | 23.52d | 2007-04-02 A | 2007-05-03 | 31 | 33% | 15.75d | 2007-04-02 | 2007-05-15 | 31.07d | 131.07d |  |  |  | 27.8h | 9.6h |
| 35 | 1.1.1.5.1 | Meet with Indepdent QA | 2h | 2007-04-02 A | 2007-04-02 A |  | 100% |  | 2007-04-09 | 2007-04-09 | 2h |  | finish no later than 2007-04-27 | 2007-04-27 | bgendleman [80%] | 1.6h | 1.6h |
| 36 | 5.1 | Analyze and Identify Test Approach | 1d | 2007-04-02 A | 2007-04-27 A | 35 | 100% |  | 2007-04-02 | 2007-04-27 | 1d |  |  |  | smatyas; bgendleman | 8h | 8h |
| 37 | 1.1.1.5.3 | **Finalize Deliverables** | 4.02d | 2007-04-27 | 2007-05-03 | 36 |  |  | 2007-04-27 | 2007-05-04 | 5d | 131.07d |  |  |  | 18.2h |  |
| 38 | 1.1.1.5.3.1 | Release Test Plan | 2.53d | 2007-04-27 | 2007-05-03 |  |  |  | 2007-04-27 | 2007-05-04 | 2.5d | 131.07d |  |  | smatyas; bgendleman [25%] | 18.2h |  |
| 39 | 6 | **Environment** | 36d | 2007-04-09 A | 2007-05-28 A | 34 | 100% |  | 2007-04-02 | 2007-05-14 | 30.25d |  |  |  |  | 42h | 42h |
| 40 | 1.1.1.6.1 | Establish Development Environment | 20d | 2007-05-01 A | 2007-05-28 A |  | 100% |  |  |  |  |  | finish no earlier than 2007-05-25 |  |  |  |  |
| 41 | 1.1.1.6.2 | Launch Development Process | 3h | 2007-04-09 A | 2007-04-09 A | 40 | 100% |  | 2007-04-09 | 2007-04-18 | 6h |  | start no earlier than 2007-04-09 |  | smatyas; smiller | 6h | 6h |
| 42 | 1.1.1.6.3 | **Finalize Deliverables** | 25d | 2007-04-16 A | 2007-05-18 A | 41 | 100% |  | 2007-04-19 | 2007-05-14 | 17.25d |  |  |  |  | 36h | 36h |
| 43 | 1.1.1.6.3.1 | Release Development Case | 0.25d | 2007-05-14 A | 2007-05-14 A |  | 100% |  | 2007-05-14 | 2007-05-14 | 0.25d |  | start no earlier than 2007-05-14 |  |  |  |  |
| 44 | 1.1.1.6.3.2 | Release Guidelines for the Project | 1.25d | 2007-04-16 A | 2007-04-17 A | 43 | 100% |  | 2007-04-20 | 2007-04-23 | 1.25d |  | start no earlier than 2007-04-16 |  |  |  |  |
| 45 | 1.1.1.6.3.3 | Release Templates for the Project | 9d | 2007-04-17 A | 2007-05-18 A | 44 | 100% |  | 2007-04-19 | 2007-04-30 | 5.55d |  | finish no earlier than 2007-04-13 |  | smiller [50%] | 36h | 36h |
| 46 | 7 | **Configuration & Change Management** | 14.5d | 2007-04-02 A | 2007-04-23 A | 39 | 100% |  | 2007-04-02 | 2007-05-15 | 31.25d |  |  |  |  | 24h | 24h |
| 47 | 7.1 | Plan Project Configuration and Change Control | 1d | 2007-04-20 A | 2007-04-23 A |  | 100% |  | 2007-04-20 | 2007-04-24 | 0.55d |  | finish no earlier than 2007-04-20 | 2007-05-15 | bgendleman | 8h | 8h |
| 48 | 1.1.1.7.2 | **Finalize Deliverables** | 4.12d | 2007-04-02 A | 2007-04-06 A | 47 | 100% |  | 2007-04-02 | 2007-05-15 | 31.25d |  |  |  |  | 16h | 16h |
| 49 | 1.1.1.7.2.1 | Release Configuration Management Plan | 1d | 2007-04-02 A | 2007-04-03 A |  | 100% |  | 2007-04-02 | 2007-05-15 | 0.75d |  |  |  | bgendleman | 8h | 8h |
| 50 | 1.1.1.7.2.2 | G-Forge Implementation of the Change Control Process | 1d | 2007-04-02 A | 2007-04-06 A | 49 | 100% |  | 2007-04-02 | 2007-05-14 | 2d |  |  |  | bgendleman | 8h | 8h |
| 51 | 1.1.1.8 | Inception Complete | 1d | 2007-05-28 A | 2007-05-28 A | 46 | 100% |  | 2007-05-15 | 2007-05-15 | 0d |  | start no earlier than 2007-05-28 | 2007-05-15 |  |  |  |

Notes:
- 27: - installed cpas local / - reverse engineered the data model
- 44: UML, Java, JSP/HTML
- 45: Java, JSP/HTML / Use Case Summary / Use Case Specification / Vision / Traceability Matrix - will attempt to do in EA

| ID | WBS | Task | Duration | Start | Finish | Predecessors | Complete | Remaining | Baseline start | Baseline finish | Baseline duration | Total slack | Free slack | Constraint | Resources | Work | Actual work |
| --- | --- | --- | --- | --- | --- | --- | --- | --- | --- | --- | --- | --- | --- | --- | --- | --- | --- |
| 52 | 1.2 | **Elaboration Phase** | 155d? | 2007-05-29 A | 2007-12-31 | 2 | 35% | 100.42d? | 2007-05-15 | 2007-05-17 | 2.5d? | 59d |  |  |  | 72.8h | 20h |
| 53 | 1.2.1 | **Elaboration - Iteration 1** | 47.5d | 2007-05-29 A | 2007-08-02 |  | 59% | 19.68d | 2007-05-15 | 2007-05-17 | 2.5d | 106.5d | 0d |  |  | 20h | 20h |
| 54 | 1.2.1.1 | **Project Management** | 10d | 2007-05-29 A | 2007-06-11 |  | 81% | 1.9d |  |  |  | 81.24d | 0d |  |  | 20h | 20h |
| 55 | 1.2.1.1.1 | Iteration Post Mortem - Inception | 20h | 2007-05-29 A | 2007-05-31 A |  | 100% |  | 2007-05-15 | 2007-05-17 | 20h |  |  | start no earlier than 2007-05-23 | smatyas | 20h | 20h |
| 56 | 1.2.1.1.2 | Plan Iteration | 1d | 2007-05-29 A | 2007-05-29 A | 55 | 100% |  |  |  |  |  |  |  |  |  |  |
| 57 | 1.2.1.1.3 | Trip to Indianapolis - CPAS | 4d | 2007-06-04 A | 2007-06-07 A | 56 | 100% |  |  |  |  |  |  | start no earlier than 2007-06-04 |  |  |  |
| 58 | 1.2.1.1.4 | Plan for Next Iteration | 1d | 2007-05-29 A | 2007-06-08 | 57 | 50% | 0.5d |  |  |  | 75.24d | 0d |  |  |  |  |
| 59 | 1.2.1.1.5 | **Finalize Deliverables** | 10d | 2007-05-29 A | 2007-06-11 | 58 | 25% | 7.5d |  |  |  | 81.24d |  |  |  |  |  |
| 60 | 1.2.1.1.5.1 | Update Project Plan | 1d | 2007-05-29 A | 2007-06-08 |  | 50% | 0.5d |  |  |  | 81.24d | 0d |  |  |  |  |
| 61 | 1.2.1.1.5.2 | Update Risk List | 1d | 2007-06-11 | 2007-06-11 | 60 |  |  |  |  |  | 73.66d |  |  |  |  |  |
| 62 | 1.2.1.2 | **Requirements** | 12.5d | 2007-05-29 A | 2007-06-14 | 54 | 73% | 3.41d |  |  |  | 82.15d | 0d |  |  |  |  |
| 63 | 1.2.1.2.1 | Incorporate Stakeholder Comments into Vision and Supplemental Specs | 2d | 2007-05-29 A | 2007-05-30 A |  | 100% |  |  |  |  |  |  |  |  |  |  |
| 64 | 1.2.1.2.2 | **Finalize Deliverables** | 12.5d | 2007-05-29 A | 2007-06-14 | 63 | 67% | 4.17d |  |  |  | 82.15d |  |  |  |  |  |
| 65 | 1.2.1.2.2.1 | Detail Registration and Login UC | 5d | 2007-05-29 A | 2007-06-14 |  | 50% | 2.5d |  |  |  | 82.15d |  | finish no earlier than 2007-06-04 |  |  |  |
| 66 | 1.2.1.2.2.2 | Detail Manage Protocol | 3d | 2007-06-05 A | 2007-06-07 A | 65 | 100% |  |  |  |  |  |  |  |  |  |  |
| 67 | 1.2.1.2.2.3 | Parse and Validate Proteomic Experiment File UC | 1d | 2007-06-08 A | 2007-06-12 | 66 | 50% | 0.5d |  |  |  | 84.15d |  |  |  |  |  |
| 68 | 1.2.1.3 | **Analysis and Design** | 21d | 2007-05-29 A | 2007-06-26 | 62 | 85% | 3.19d |  |  |  | 76.84d | 0d |  |  |  |  |
| 69 | 1.2.1.3.1 | Investigate EBI vs. EVS Ontology | 5d | 2007-05-29 A | 2007-06-04 A |  | 100% |  |  |  |  |  |  |  |  |  |  |
| 70 | 1.2.1.3.2 | Object Model for Experiment Annotation | 8d | 2007-06-08 A | 2007-06-19 A | 69 | 100% |  |  |  |  |  |  |  |  |  |  |
| 71 | 1.2.1.3.3 | Create Data Model | 5d | 2007-06-20 A | 2007-06-26 | 70 | 15% | 4.25d |  |  |  | 71.58d |  |  |  |  |  |
| 72 | 1.2.1.3.4 | Design of Conversion to XAR or PRIDE | 10d | 2007-06-08 A | 2007-06-21 A | 71 | 100% |  |  |  |  |  |  |  |  |  |  |
| 73 | 1.2.1.4 | **Implementation** | 25.5d | 2007-06-13 A | 2007-07-18 | 68 | 26% | 18.82d |  |  |  | 80.16d | 0d |  |  |  |  |
| 74 | 1.2.1.4.1 | Create Database | 3d | 2007-06-14 A | 2007-06-18 A |  | 100% |  |  |  |  |  |  |  |  |  |  |
| 75 | 1.2.1.4.2 | Representative XML Produced | 13d | 2007-06-13 A | 2007-07-11 | 74 | 19% | 10.5d |  |  |  | 80.16d | 0d | start no earlier than 2007-06-13 |  |  |  |
| 76 | 1.2.1.4.3 | UI for Protocol Annotation | 5d | 2007-07-11 | 2007-07-18 | 75 |  |  |  |  |  | 76.93d |  | start no earlier than 2007-06-29 |  |  |  |

Notes:
- 69: Decision was to use both beginning with EVS
- 76: Deferred to E2

| ID | WBS | Task | Type | Duration | Start | Finish | Predecessors | Complete | Remaining | Total slack | Free slack | Constraint | Work |
| --- | --- | --- | --- | --- | --- | --- | --- | --- | --- | --- | --- | --- | --- |
| 77 | 1.2.1.5 | **Test** |  | 20.5d | 2007-06-26 A | 2007-07-24 | 73 | 20% | 16.4d | 92.56d | 0d |  |  |
| 78 | 1.2.1.5.1 | Request Test Environment |  | 1d | 2007-06-26 A | 2007-06-26 A |  | 100% |  |  |  | start no earlier than 2007-06-26 |  |
| 79 | 1.2.1.5.2 | Produce Test Plan |  | 1d | 2007-07-18 | 2007-07-19 | 78 |  |  | 91.53d | 0d |  |  |
| 80 | 1.2.1.5.3 | Junit Tests for Targeted UC |  | 3d | 2007-07-19 | 2007-07-24 | 79 |  |  | 91.53d |  |  |  |
| 81 | 1.2.1.6 | **Environment** |  | 42.5d | 2007-05-29 A | 2007-07-26 | 77 | 63% | 15.94d | 106.5d | 0d |  |  |
| 82 | 1.2.1.6.1 | Development Environment Available |  | 1w | 2007-05-29 A | 2007-06-04 A |  | 100% |  |  |  |  |  |
| 83 | 1.2.1.6.2 | **Set Up Tools** |  | 37.5d | 2007-06-05 A | 2007-07-26 | 82 | 25% | 28.12d | 106.5d |  |  |  |
| 84 | 1.2.1.6.2.1 | Set Up Maven |  | 1d | 2007-07-24 | 2007-07-25 |  |  |  | 106.5d | 0d |  |  |
| 85 | 1.2.1.6.2.2 | Set Up Continuous Integration |  | 1d | 2007-07-25 | 2007-07-26 | 84 |  |  | 106.5d |  |  |  |
| 86 | 1.2.1.6.2.3 | Set Up Eclipse |  | 1d | 2007-06-05 A | 2007-06-05 A | 85 | 100% |  |  |  |  |  |
| 87 | 1.2.1.6.2.4 | Set Up Selenium |  | 1d | 2007-07-24 | 2007-07-25 | 86 |  |  | 106.75d | 0d |  |  |
| 88 | 1.2.1.6.2.5 | Set Up Code Quality Tools |  | 1d | 2007-06-05 A | 2007-07-26 | 87 | 25% | 0.75d | 106.75d |  |  |  |
| 89 | 1.2.1.7 | Elabortion Iteration 1 Complete | milestone | 0d | 2007-07-26 | 2007-07-26 | 81 |  |  | 106.5d | 0d |  |  |
| 90 | 1.2.1.8 | Vacation |  | 5d | 2007-07-26 | 2007-08-02 | 89 |  |  | 106.5d |  |  |  |
| 91 | 1.2.2 | **Elaboration - Iteration 2** |  | 107.5d? | 2007-08-02 | 2007-12-31 | 53 |  |  | 59d |  |  | 52.8h |
| 92 | 1.2.2.1 | **Project Management** |  | 3d | 2007-08-02 | 2007-08-07 |  |  |  | 106.5d | 0d |  |  |
| 93 | 1.2.2.1.1 | Iteration Post Mortem - E1 |  | 1d | 2007-08-02 | 2007-08-03 |  |  |  | 106.5d | 0d |  |  |
| 94 | 1.2.2.1.2 | Plan Iteration |  | 1d | 2007-08-03 | 2007-08-06 | 93 |  |  | 106.5d | 0d |  |  |
| 95 | 1.2.2.1.3 | Plan for Next Iteration |  | 1d | 2007-08-06 | 2007-08-07 | 94 |  |  | 106.5d |  |  |  |
| 96 | 1.2.2.2 | **Requirements** |  | 7d | 2007-08-07 | 2007-08-16 | 92 |  |  | 106.5d | 0d |  |  |
| 97 | 1.2.2.2.1 | Incorporate Stakeholder Use Case Feedback |  | 2d | 2007-08-07 | 2007-08-09 |  |  |  | 106.5d | 0d |  |  |
| 98 | 1.2.2.2.2 | **Finalize Deliverables** |  | 5d | 2007-08-09 | 2007-08-16 | 97 |  |  | 106.5d |  |  |  |
| 99 | 1.2.2.2.2.1 | Detail Registration Use Case |  | 1d | 2007-08-09 | 2007-08-10 |  |  |  | 106.5d | 0d |  |  |
| 100 | 1.2.2.2.2.2 | Detail Manage Experiments |  | 2d | 2007-08-10 | 2007-08-14 | 99 |  |  | 106.5d | 0d |  |  |
| 101 | 1.2.2.2.2.3 | Validation Requirements of XAR and Pride |  | 2d | 2007-08-14 | 2007-08-16 | 100 |  |  | 106.5d |  |  |  |

Notes:
- 84: Determined that Maven is premature

| ID | WBS | Task | Type | Duration | Start | Finish | Predecessors | Baseline start | Baseline finish | Baseline duration | Total slack | Free slack | Constraint | Resources | Work |
| --- | --- | --- | --- | --- | --- | --- | --- | --- | --- | --- | --- | --- | --- | --- | --- |
| 102 | 1.2.2.3 | **Analysis and Design** |  | 13d | 2007-08-16 | 2007-09-04 | 96 |  |  |  | 106.5d | 0d |  |  |  |
| 103 | 1.2.2.3.1 | Update Software Architecture Document |  | 2d | 2007-08-16 | 2007-08-20 |  |  |  |  | 106.5d | 0d |  |  |  |
| 104 | 1.2.2.3.2 | Refine Design of XAR and Pride Conversion |  | 5d | 2007-08-20 | 2007-08-27 | 103 |  |  |  | 106.5d | 0d |  |  |  |
| 105 | 1.2.2.3.3 | Specify EVS Access |  | 3d | 2007-08-27 | 2007-08-30 | 104 |  |  |  | 106.5d | 0d |  |  |  |
| 106 | 1.2.2.3.4 | Specify EBI Access Method |  | 3d | 2007-08-30 | 2007-09-04 | 105 |  |  |  | 106.5d |  |  |  |  |
| 107 | 1.2.2.4 | **Implementation** |  | 25d | 2007-09-04 | 2007-10-09 | 102 |  |  |  | 106.5d | 0d |  |  |  |
| 108 | 1.2.2.4.1 | Produce Representative XML |  | 5d | 2007-09-04 | 2007-09-11 |  |  |  |  | 106.5d | 0d |  |  |  |
| 109 | 1.2.2.4.2 | Build Manage Protocol UI |  | 8d | 2007-09-11 | 2007-09-21 | 108 |  |  |  | 106.5d | 0d |  |  |  |
| 110 | 1.2.2.4.3 | Build Manage Experiments UI |  | 12d | 2007-09-21 | 2007-10-09 | 109 |  |  |  | 106.5d |  |  |  |  |
| 111 | 1.2.2.5 | **Test** |  | 3d | 2007-10-09 | 2007-10-12 | 107 |  |  |  | 106.5d | 0d |  |  |  |
| 112 | 1.2.2.5.1 | Produce Test Plan |  | 1d | 2007-10-09 | 2007-10-10 |  |  |  |  | 106.5d | 0d |  |  |  |
| 113 | 1.2.2.5.2 | Junit Tests for Targeted UC |  | 2d | 2007-10-10 | 2007-10-12 | 112 |  |  |  | 106.5d |  |  |  |  |
| 114 | 1.2.2.6 | **Environment** |  | 8d | 2007-10-12 | 2007-10-24 | 111 |  |  |  | 106.5d | 0d |  |  | 52.8h |
| 115 | 1.2.2.6.1 | Test Environment Available |  | 1d | 2007-10-12 | 2007-10-15 |  |  |  |  | 106.5d | 0d |  |  |  |
| 116 | 1.2.2.6.2 | Installation Document |  | 1d | 2007-10-15 | 2007-10-16 | 115 |  |  |  | 106.5d | 0d |  |  |  |
| 117 | 1.2.2.6.3 | **Set Up Tools** |  | 6d | 2007-10-16 | 2007-10-24 | 116 |  |  |  | 106.5d |  |  |  | 52.8h |
| 118 | 1.2.2.6.3.1 | Set Up Continuous Integration |  | 2d | 2007-10-16 | 2007-10-18 |  |  |  |  | 106.5d | 0d |  | kkanchinadam; smatyas [10%] | 17.6h |
| 119 | 1.2.2.6.3.2 | Set Up Selenium |  | 2d | 2007-10-18 | 2007-10-22 | 118 |  |  |  | 106.5d | 0d |  | kkanchinadam; smatyas [10%] | 17.6h |
| 120 | 1.2.2.6.3.3 | Set Up Code Quality Tools |  | 2d | 2007-10-22 | 2007-10-24 | 119 |  |  |  | 106.5d |  |  | kkanchinadam; smatyas [10%] | 17.6h |
| 121 | 1.2.2.7 | **Configuration Management** |  | 1d? | 2007-10-24 | 2007-10-25 | 114 |  |  |  | 106.5d | 47.5d |  |  |  |
| 122 | 1.2.2.7.1 | Define Configuration Management Plan |  | 1d? | 2007-10-24 | 2007-10-25 |  |  |  |  | 106.5d |  |  |  |  |
| 123 | 1.2.2.8 | Elaboration Iteration 2 Complete | milestone | 0d | 2007-12-31 | 2007-12-31 | 121 |  |  |  | 59d |  | finish no earlier than 2007-12-31 |  |  |
| 124 | 1.3 | **Construction Phase** |  | 85d | 2008-03-24 | 2008-07-18 | 52 | 2007-05-17 | 2007-05-18 | 1d? | 0d |  |  |  |  |
| 125 | 1.3.1 | **Construction - Iteration 1** |  | 85d | 2008-03-24 | 2008-07-18 |  | 2007-05-17 | 2007-05-18 | 1d? | 0d |  |  |  |  |
| 126 | 1.3.1.1 | **Implementation** |  | 85d | 2008-03-24 | 2008-07-18 |  |  |  |  | 0d |  |  |  |  |
| 127 | 1.3.1.1.1 | **Search Repository UC** |  | 22d | 2008-03-24 | 2008-04-22 |  |  |  |  | 0d |  |  |  |  |
| 128 | 1.3.1.1.1.1 | **Search Experiments** |  | 9d | 2008-03-24 | 2008-04-03 |  |  |  |  | 0d |  |  |  |  |
| 129 | 1.3.1.1.1.1.1 | Implement Experiment Search |  | 9d | 2008-03-24 | 2008-04-03 |  |  |  |  | 0d |  | start no earlier than 2008-03-24 |  |  |
| 130 | 1.3.1.1.1.2 | QA deliver |  | 1d | 2008-04-04 | 2008-04-04 | 128 |  |  |  | 0d |  |  |  |  |
| 131 | 1.3.1.1.1.3 | Bug Fixes |  | 1d | 2008-04-07 | 2008-04-07 | 130 |  |  |  | 0d |  |  |  |  |

| ID | WBS | Task | Duration | Start | Finish | Predecessors | Total slack |
| --- | --- | --- | --- | --- | --- | --- | --- |
| 132 | 1.3.1.1.1.4 | **Search Protocols** | 9d | 2008-04-08 | 2008-04-18 | 131 | 0d |
| 133 | 1.3.1.1.1.4.1 | Implement protocol Search | 9d | 2008-04-08 | 2008-04-18 |  | 0d |
| 134 | 1.3.1.1.1.5 | QA Delivery | 1d | 2008-04-21 | 2008-04-21 | 132 | 0d |
| 135 | 1.3.1.1.1.6 | Bug Fixes | 1d | 2008-04-22 | 2008-04-22 | 134 | 0d |
| 136 | 1.3.1.1.2 | **Manage Experiments UC** | 49d | 2008-04-23 | 2008-06-30 | 127 | 0d |
| 137 | 1.3.1.1.2.1 | **Create new Experiment** | 16d | 2008-04-23 | 2008-05-14 |  | 0d |
| 138 | 1.3.1.1.2.1.1 | Overview page | 2d | 2008-04-23 | 2008-04-24 |  | 0d |
| 139 | 1.3.1.1.2.1.2 | Add/Edit Protocols Page | 2d | 2008-04-25 | 2008-04-28 | 138 | 0d |
| 140 | 1.3.1.1.2.1.3 | Add/Edit Inputs Page | 2d | 2008-04-29 | 2008-04-30 | 139 | 0d |
| 141 | 1.3.1.1.2.1.4 | Add/Edit Outputs Page | 2d | 2008-05-01 | 2008-05-02 | 140 | 0d |
| 142 | 1.3.1.1.2.1.5 | Review Protocol Page | 2d | 2008-05-05 | 2008-05-06 | 141 | 0d |
| 143 | 1.3.1.1.2.1.6 | Experiment Summary Page | 2d | 2008-05-07 | 2008-05-08 | 142 | 0d |
| 144 | 1.3.1.1.2.1.7 | Parent/Child Notation | 2d | 2008-05-09 | 2008-05-12 | 143 | 0d |
| 145 | 1.3.1.1.2.1.8 | QA Delivery | 1d | 2008-05-13 | 2008-05-13 | 144 | 0d |
| 146 | 1.3.1.1.2.1.9 | Bug Fixes | 1d | 2008-05-14 | 2008-05-14 | 145 | 0d |
| 147 | 1.3.1.1.2.2 | Repeat Experiment | 5d | 2008-05-15 | 2008-05-21 | 137 | 0d |
| 148 | 1.3.1.1.2.3 | XAR File Download | 5d | 2008-05-22 | 2008-05-28 | 147 | 0d |
| 149 | 1.3.1.1.2.4 | Delete Experiment | 3d | 2008-05-29 | 2008-06-02 | 148 | 0d |
| 150 | 1.3.1.1.2.5 | QA Delivery | 1d | 2008-06-03 | 2008-06-03 | 149 | 0d |
| 151 | 1.3.1.1.2.6 | Bug Fixes | 1d | 2008-06-04 | 2008-06-04 | 150 | 0d |
| 152 | 1.3.1.1.2.7 | **Tree View** | 18d | 2008-06-05 | 2008-06-30 | 151 | 0d |
| 153 | 1.3.1.1.2.7.1 | **implement Tree using struts** | 18d | 2008-06-05 | 2008-06-30 |  | 0d |
| 154 | 1.3.1.1.2.7.1.1 | Design Tree Mechanism | 4d | 2008-06-05 | 2008-06-10 |  | 0d |
| 155 | 1.3.1.1.2.7.1.2 | **Tree View** | 12d | 2008-06-11 | 2008-06-26 | 154 | 0d |
| 156 | 1.3.1.1.2.7.1.2.1 | Overview page | 2d | 2008-06-11 | 2008-06-12 |  | 0d |
| 157 | 1.3.1.1.2.7.1.2.2 | Protocols Page | 2d | 2008-06-13 | 2008-06-16 | 156 | 0d |
| 158 | 1.3.1.1.2.7.1.2.3 | Inputs Page | 2d | 2008-06-17 | 2008-06-18 | 157 | 0d |
| 159 | 1.3.1.1.2.7.1.2.4 | Outputs Page | 2d | 2008-06-19 | 2008-06-20 | 158 | 0d |
| 160 | 1.3.1.1.2.7.1.2.5 | Review Protocol Page | 2d | 2008-06-23 | 2008-06-24 | 159 | 0d |
| 161 | 1.3.1.1.2.7.1.2.6 | Experiment Summary Page | 2d | 2008-06-25 | 2008-06-26 | 160 | 0d |
| 162 | 1.3.1.1.2.7.1.3 | QA delivery | 1d | 2008-06-27 | 2008-06-27 | 155 | 0d |
| 163 | 1.3.1.1.2.7.1.4 | Bug Fixes | 1d | 2008-06-30 | 2008-06-30 | 162 | 0d |

| ID | WBS | Task | Duration | Start | Finish | Predecessors | Total slack | Free slack |
| --- | --- | --- | --- | --- | --- | --- | --- | --- |
| 164 | 1.3.1.1.3 | **Register User UC** | 14d | 2008-07-01 | 2008-07-18 | 136 | 0d |  |
| 165 | 1.3.1.1.3.1 | **LDAP integration for Registration** | 8d | 2008-07-01 | 2008-07-10 |  | 0d |  |
| 166 | 1.3.1.1.3.1.1 | Account Registration (email) | 4d | 2008-07-01 | 2008-07-04 |  | 0d |  |
| 167 | 1.3.1.1.3.1.2 | Implement UI (2 screens) | 4d | 2008-07-07 | 2008-07-10 | 166 | 0d |  |
| 168 | 1.3.1.1.3.2 | **User Management** | 4d | 2008-07-11 | 2008-07-16 | 165 | 0d |  |
| 169 | 1.3.1.1.3.2.1 | Implement User Add/Edit Page | 4d | 2008-07-11 | 2008-07-16 |  | 0d |  |
| 170 | 1.3.1.1.3.3 | QA delivery | 1d | 2008-07-17 | 2008-07-17 | 168 | 0d |  |
| 171 | 1.3.1.1.3.4 | Bug Fixes | 1d | 2008-07-18 | 2008-07-18 | 170 | 0d |  |
| 172 | 1.4 | Elaboration | 1d? | 2007-04-02 | 2007-04-02 |  | 350d |  |
| 173 | 1.5 | Construction | 1d? | 2007-04-02 | 2007-04-02 |  | 350d |  |
| 174 | 1.6 | Transition | 1d? | 2007-04-02 | 2007-04-02 |  | 350d |  |
| 175 | 1.7 | Add/Edit Protocols Page | 2d | 2007-04-02 | 2007-04-03 |  | 343d | 0d |
| 176 | 1.8 | Add/Edit Inputs Page | 2d | 2007-04-04 | 2007-04-05 | 175 | 343d | 0d |
| 177 | 1.9 | Add/Edit Outputs Page | 2d | 2007-04-06 | 2007-04-09 | 176 | 343d | 0d |
| 178 | 1.10 | Review Protocol Page | 1d | 2007-04-10 | 2007-04-10 | 177 | 343d | 0d |
| 179 | 1.11 | Experiment Summary Page | 1d | 2007-04-11 | 2007-04-11 | 178 | 343d |  |
| 180 | 2 | Delete Expeirment Run | 1d | 2007-04-02 | 2007-04-02 |  | 350d |  |
| 181 | 3 | QA delivery | 1d | 2008-07-01 | 2008-07-01 | 152 | 11d | 0d |
| 182 | 4 | Bug Fixes | 2d | 2008-07-02 | 2008-07-03 | 181 | 11d |  |
| 183 | 5 | **QA Delivery - after bug fixes** | 11d | 2008-07-21 | 2008-08-04 | 182 | 0d |  |
| 184 | 5.1 | **Final Product Delivery** | 5d | 2008-07-21 | 2008-07-25 | 124 | 0d |  |
| 185 | 5.1.1 | Zope Site Setup | 3d | 2008-07-21 | 2008-07-23 |  | 0d |  |
| 186 | 5.1.2 | Deploy to Production | 2d | 2008-07-24 | 2008-07-25 | 185 | 0d |  |
| 187 | 5.2 | Release Candidate Delivered to QA | 1d | 2008-07-28 | 2008-07-28 | 184 | 0d |  |

| ID | WBS | Task | Type | Duration | Start | Finish | Predecessors | Baseline start | Baseline finish | Baseline duration | Total slack |
| --- | --- | --- | --- | --- | --- | --- | --- | --- | --- | --- | --- |
| 188 | 5.3 | **Transition Phase** |  | 5d | 2008-07-29 | 2008-08-04 | 187 | 2007-05-18 | 2007-05-21 | 1d? | 0d |
| 189 | 5.3.1 | Transition - Iteration 1 | milestone | 1w | 2008-07-29 | 2008-08-04 |  | 2007-05-18 | 2007-05-21 | 1d? | 0d |
